# T04_Project_Plan

Schedule from MS Project, 2014-10-01 to 2014-12-11, A marks actual dates.

## Calendars

- Standard: Mon-Fri 08:00-12:00, 13:00-17:00; Sat-Sun off. Exceptions (off unless hours are given): 2014-10-25 08:00-12:00, 13:00-17:00, 2014-11-15 to 2014-11-16 08:00-12:00, 13:00-17:00.

## Resources

| Resource |
| --- |
| Rusty |
| Dan |
| Noah |
| Branden |

## Schedule

| ID | WBS | Task | Type | Duration | Start | Finish | Predecessors | Complete | Remaining | Total slack | Free slack | Constraint | Resources | Work | Actual work |
| --- | --- | --- | --- | --- | --- | --- | --- | --- | --- | --- | --- | --- | --- | --- | --- |
| 1 | 1 | Project Start | milestone | 0d | 2014-10-01 | 2014-10-01 |  |  |  | 54d |  |  |  |  |  |
| 2 | 2 | Form Group |  | 1d | 2014-10-01 A | 2014-10-01 A |  | 100% |  |  |  |  |  |  |  |
| 3 | 3 | **Choose Project** |  | 2d | 2014-10-01 A | 2014-10-03 A |  | 100% |  |  |  |  |  | 140h | 140h |
| 4 | 3.1 | Generate Project Ideas |  | 6d | 2014-10-01 A | 2014-10-03 A |  | 100% |  |  |  |  | Branden; Dan [50%]; Noah [50%]; Rusty | 96h | 96h |
| 5 | 3.2 | Determine Pros/Cons of all ideas generated. |  | 2d | 2014-10-01 A | 2014-10-02 A |  | 100% |  |  |  |  | Branden; Dan [25%]; Noah [50%]; Rusty | 28h | 28h |
| 6 | 3.3 | Complete Decision Matrix. |  | 4d | 2014-10-02 A | 2014-10-03 A | 5 | 100% |  |  |  |  | Dan [25%]; Rusty | 16h | 16h |
| 7 | 3.4 | Decide on project | milestone | 0d | 2014-10-03 A | 2014-10-03 A | 6 | 100% |  |  |  |  | Branden; Dan; Noah; Rusty |  |  |
| 8 | 4 | Order Sensors. | milestone | 0d | 2014-10-13 A | 2014-10-13 A |  | 100% |  |  |  | start no earlier than 2014-10-13 | Dan |  |  |
| 9 | 5 | Decide on basic project specifications. |  | 1d | 2014-10-03 A | 2014-10-03 A | 7 | 100% |  |  |  |  | Branden; Dan; Noah; Rusty | 32h | 32h |
| 10 | 6 | **Project Management** |  | 41d | 2014-10-01 A | 2014-11-24 |  | 57% | 17.45d | 13d |  |  |  | 368h | 136h |
| 11 | 6.1 | Create Repository and add all users. |  | 1d | 2014-10-01 A | 2014-10-01 A |  | 100% |  |  |  |  | Dan | 8h | 8h |
| 12 | 6.2 | Design basic wiki layout to meet assigned requirements. |  | 1d | 2014-10-01 A | 2014-10-01 A |  | 100% |  |  |  |  | Noah | 8h | 8h |
| 13 | 6.3 | Write project proposal |  | 5d | 2014-10-03 A | 2014-10-05 A | 9 | 100% |  |  |  |  | Rusty | 40h | 40h |
| 14 | 6.4 | Project proposal due | milestone, manual | 0d | 2014-10-13 A | 2014-10-13 A |  | 100% |  |  |  |  |  |  |  |
| 15 | 6.5 | Proposal approved by instructor | milestone, manual | 0d | 2014-10-13 A | 2014-10-13 A | 13 | 100% |  |  |  |  |  |  |  |
| 16 | 6.6 | Write design specifications |  | 5d | 2014-10-20 A | 2014-10-22 A |  | 100% |  |  |  | start no earlier than 2014-10-20 | Rusty | 40h | 40h |
| 17 | 6.7 | Review design specifications |  | 1d | 2014-10-25 A | 2014-10-25 A | 16 | 100% |  |  |  | start no earlier than 2014-10-25 | Branden; Dan; Noah; Rusty | 32h | 32h |
| 18 | 6.8 | Design specifications due | milestone, manual | 0d | 2014-10-27 A | 2014-10-27 A |  | 100% |  |  |  |  |  |  |  |
| 19 | 6.9 | Complete task schedule. |  | 1d | 2014-11-08 A | 2014-11-08 A |  | 100% |  |  |  | finish no earlier than 2014-11-08 | Rusty | 8h | 8h |
| 20 | 6.10 | Review task schedule | manual | 0.88d | 2014-11-09 | 2014-11-09 | 19 |  |  |  |  |  | Branden; Dan; Noah; Rusty | 32h |  |
| 21 | 6.11 | Task schedule due | milestone, manual | 0d | 2014-11-10 | 2014-11-10 |  |  |  |  |  |  |  |  |  |
| 22 | 6.12 | Schedule Final Presentation | milestone, manual | 0d | 2014-11-10 | 2014-11-10 |  |  |  |  |  |  | Rusty |  |  |
| 23 | 6.13 | Create system design block models | manual | 1d | 2014-11-12 | 2014-11-13 |  |  |  |  |  |  | Rusty | 24h |  |
| 24 | 6.14 | Review of block models |  | 2d | 2014-11-16 | 2014-11-16 | 23 |  |  | 18d |  | finish no earlier than 2014-11-16 | Branden; Dan; Noah; Rusty | 64h |  |
| 25 | 6.15 | System design block models due | milestone, manual | 0d | 2014-11-17 | 2014-11-17 |  |  |  |  |  |  |  |  |  |
| 26 | 6.16 | Create initial test plan | manual | 1d | 2014-11-17 | 2014-11-18 |  |  |  |  |  |  | Rusty | 16h |  |
| 27 | 6.17 | Finalize test plan based on lecture |  | 5.5d | 2014-11-18 | 2014-11-20 | 26 |  |  | 14.12d |  |  | Branden; Dan; Noah; Rusty | 96h |  |
| 28 | 6.18 | Test Plan Due | milestone | 0d | 2014-11-24 | 2014-11-24 |  |  |  | 10d | 0d | start no earlier than 2014-11-24 |  |  |  |

| ID | WBS | Task | Type | Duration | Start | Finish | Predecessors | Complete | Resources | Work | Actual work |
| --- | --- | --- | --- | --- | --- | --- | --- | --- | --- | --- | --- |
| 29 | 7 | **Research project** |  | 1d | 2014-10-13 A | 2014-10-14 A | 15 | 100% |  | 112h | 112h |
| 30 | 7.1 | Determine sensor type and source. |  | 2d | 2014-10-13 A | 2014-10-14 A |  | 100% | Dan; Rusty | 32h | 32h |
| 31 | 7.2 | Research interfacing with Atmel processor. |  | 3d | 2014-10-13 A | 2014-10-14 A |  | 100% | Noah; Branden | 48h | 48h |
| 32 | 7.3 | Decide on display type |  | 1d | 2014-10-13 A | 2014-10-13 A |  | 100% | Branden; Dan; Noah; Rusty | 32h | 32h |
| 33 | 8 | **Design Circuit** |  | 14d | 2014-10-17 A | 2014-11-05 A | 18 | 100% |  | 140h | 140h |
| 34 | 8.1 | Design display board |  | 1d | 2014-10-27 A | 2014-10-27 A | 32 | 100% | Dan | 8h | 8h |
| 35 | 8.2 | Design main board |  | 1d | 2014-10-27 A | 2014-10-27 A | 15 | 100% | Noah | 8h | 8h |
| 36 | 8.3 | Revise |  | 2d | 2014-10-27 A | 2014-10-28 A | 34, 35 | 100% | Branden [50%]; Rusty [50%] | 16h | 16h |
| 37 | 8.4 | Decide on packages and source parts |  | 1d | 2014-10-28 A | 2014-10-28 A | 36 | 100% | Rusty | 8h | 8h |
| 38 | 8.5 | Order parts for prototype | milestone | 0d | 2014-10-27 A | 2014-10-27 A | 15 | 100% | Rusty |  |  |
| 39 | 8.6 | Draw display schematics | manual | 0.88d | 2014-10-17 A | 2014-10-17 A | 34 | 100% | Dan | 8h | 8h |
| 40 | 8.7 | Draw main board schematics |  | 1d | 2014-10-27 A | 2014-10-28 A | 35 | 100% | Noah | 8h | 8h |
| 41 | 8.8 | Preliminary schematics due | milestone, manual | 0d | 2014-10-29 A | 2014-10-29 A |  | 100% |  |  |  |
| 42 | 8.9 | Receive schematics feedback from instructor | milestone, manual | 0d | 2014-11-03 A | 2014-11-03 A |  | 100% |  |  |  |
| 43 | 8.10 | Revise schematics based on instructor feedback |  | 6d | 2014-11-03 A | 2014-11-05 A | 42 | 100% | Branden [25%]; Dan; Noah; Rusty | 84h | 84h |
| 44 | 9 | **Configure Embedded Interface** |  | 1d | 2014-10-14 A | 2014-10-15 A | 29 | 100% |  | 32h | 32h |
| 45 | 9.1 | "Hello World" Arduino |  | 1d | 2014-10-14 A | 2014-10-14 A |  | 100% | Noah | 8h | 8h |
| 46 | 9.2 | Bootload microcontroller on breadboard |  | 1d | 2014-10-14 A | 2014-10-14 A |  | 100% | Rusty | 8h | 8h |
| 47 | 9.3 | Upload Arduino sketches on breadboard |  | 0.5d | 2014-10-14 A | 2014-10-14 A | 46 | 100% | Rusty | 4h | 4h |
| 48 | 9.4 | Write sensor input algorithm |  | 0.5d | 2014-10-14 A | 2014-10-14 A | 45 | 100% | Noah | 4h | 4h |
| 49 | 9.5 | Write algorithm to process input and output to display |  | 1d | 2014-10-14 A | 2014-10-15 A | 48 | 100% | Noah | 8h | 8h |
| 50 | 9.6 | Code complete | milestone | 0d | 2014-10-14 A | 2014-10-14 A |  | 100% |  |  |  |
| 51 | 10 | **Prototype and Testing** |  | 5d | 2014-11-05 A | 2014-11-12 A | 33, 44 | 100% |  | 120h | 120h |
| 52 | 10.1 | Breadboard display and test using all valid inputs. |  | 1d | 2014-11-05 A | 2014-11-05 A | 38 | 100% | Dan | 8h | 8h |
| 53 | 10.2 | Test controlling individual display lights using Atmel processor. |  | 4d | 2014-11-05 A | 2014-11-07 A | 52 | 100% | Branden [25%]; Noah [50%] | 16h | 16h |
| 54 | 10.3 | Test individual sensors for range. |  | 1d | 2014-11-05 A | 2014-11-05 A | 8 | 100% | Branden; Rusty | 16h | 16h |
| 55 | 10.4 | Debug Code |  | 20d | 2014-11-05 A | 2014-11-12 A | 50 | 100% | Noah [50%] | 80h | 80h |
| 56 | 10.5 | Order parts for final build | milestone | 0d | 2014-11-07 A | 2014-11-07 A | 53 | 100% | Dan |  |  |

| ID | WBS | Task | Type | Duration | Start | Finish | Predecessors | Complete | Remaining | Total slack | Free slack | Constraint | Resources | Work | Actual work |
| --- | --- | --- | --- | --- | --- | --- | --- | --- | --- | --- | --- | --- | --- | --- | --- |
| 57 | 11 | **Create PCB Layouts** |  | 3.38d | 2014-11-05 A | 2014-11-10 |  | 89% | 0.38d | 24.62d |  |  |  | 32h | 32h |
| 58 | 11.1 | Create mainboard layout |  | 1d | 2014-11-05 A | 2014-11-05 A | 43 | 100% |  |  |  |  | Noah | 8h | 8h |
| 59 | 11.2 | Create display board layout |  | 1d | 2014-11-05 A | 2014-11-05 A | 43 | 100% |  |  |  |  | Branden | 8h | 8h |
| 60 | 11.3 | DRC check both layouts |  | 1d | 2014-11-05 A | 2014-11-06 A | 58 | 100% |  |  |  |  | Rusty | 8h | 8h |
| 61 | 11.4 | Preliminary board layouts due | milestone | 0d | 2014-11-05 A | 2014-11-05 A |  | 100% |  |  |  | start no earlier than 2014-11-05 |  |  |  |
| 62 | 11.5 | Receive instructor feedback on layouts | milestone, manual | 0d | 2014-11-07 A | 2014-11-07 A |  | 100% |  |  |  |  |  |  |  |
| 63 | 11.6 | Revise boards with instructor feedback |  | 1d | 2014-11-07 A | 2014-11-07 A | 62 | 100% |  |  |  |  | Dan | 8h | 8h |
| 64 | 11.7 | Fit parts to printed board layout |  | 0.5d | 2014-11-07 | 2014-11-10 | 63 |  |  | 24.62d |  |  |  |  |  |
| 65 | 11.8 | Submit final layouts to Osh Park | milestone | 0d | 2014-11-07 | 2014-11-07 | 63 |  |  | 25d | 0d |  |  |  |  |
| 66 | 12 | **Source or design enclosures** |  | 0.12d | 2014-11-07 | 2014-11-08 | 65 |  |  | 25d |  |  |  | 16h |  |
| 67 | 12.1 | Build enclosures (if not sourced) |  | 2d | 2014-11-07 | 2014-11-08 |  |  |  | 25d |  |  | Rusty | 16h |  |
| 68 | 13 | **Assemble finished product** |  | 3d | 2014-11-17 | 2014-11-19 |  |  |  | 2d |  |  |  | 64h |  |
| 69 | 13.1 | Receive boards from Osh Park | milestone | 0d | 2014-11-17 | 2014-11-17 |  |  |  | 15d | 0d | start no earlier than 2014-11-17 |  |  |  |
| 70 | 13.2 | Populate PCB's |  | 4d | 2014-11-17 | 2014-11-18 | 69 |  |  | 14.12d | 0d |  | Branden; Dan; Noah; Rusty | 64h |  |
| 71 | 13.3 | Populate enclosures | manual | 1d | 2014-11-19 | 2014-11-19 | 70 |  |  |  |  |  |  |  |  |
| 72 | 14 | **Final Testing** |  | 8.12d | 2014-11-18 | 2014-11-28 | 70 |  |  | 8d |  |  |  | 144h |  |
| 73 | 14.1 | Debug Hardware |  | 2.5d | 2014-11-18 | 2014-11-19 | 70 |  |  | 15.5d |  |  | Dan; Rusty | 40h |  |
| 74 | 14.2 | Debug Software |  | 5d | 2014-11-18 | 2014-11-20 | 70 |  |  | 15d |  |  | Branden [50%]; Noah [50%] | 40h |  |
| 75 | 14.3 | Confirm proper operation |  | 6d | 2014-11-26 | 2014-11-28 | 28 |  |  | 8d |  |  | Branden; Dan; Noah; Rusty | 64h |  |
| 76 | 15 | **Final Presentation** |  | 5d | 2014-12-01 | 2014-12-05 |  |  |  |  |  |  |  | 128h |  |
| 77 | 15.1 | Prepare Presentation Materials |  | 3d | 2014-12-01 | 2014-12-02 |  |  |  | 2d | 0d |  | Branden; Dan; Noah; Rusty | 96h |  |
| 78 | 15.2 | Full Group Practice |  | 1d | 2014-12-02 | 2014-12-02 | 77 |  |  | 3.12d |  |  | Branden; Dan; Noah; Rusty | 32h |  |
| 79 | 15.3 | Complete Presentation |  | 2d | 2014-12-02 | 2014-12-03 | 77 |  |  | 2d |  |  |  |  |  |
| 80 | 15.4 | Give presentation | milestone, manual | 0d | 2014-12-11 | 2014-12-11 |  |  |  |  |  | start no earlier than 2014-12-11 |  |  |  |
